# myReceita - Project

Schedule from MS Project, 2021-04-01 to 2021-07-15, A marks actual dates.

## Calendars

- Standard: Mon-Fri 08:00-12:00, 13:00-17:00; Sat-Sun off.

## Resources

| Resource |
| --- |
| João Silva |
| Bernardo Calado |
| Mariana Dias |
| Luís Silvério |
| Mário Marques da Silva |
| Lui |
| Jo~~ao |

## Schedule

| ID | WBS | Task | Type | Duration | Start | Finish | Predecessors | Complete | Remaining | Total slack | Free slack | Constraint | Resources | Work | Actual work |
| --- | --- | --- | --- | --- | --- | --- | --- | --- | --- | --- | --- | --- | --- | --- | --- |
| 1 | 1 | **myReceita** |  | 75.62d? | 2021-04-01 A | 2021-07-15 |  | 71% | 21.85d? | 0d |  |  |  | 1438h | 956h |
| 2 | 1.1 | **Candidatura** |  | 7d | 2021-04-01 A | 2021-04-09 A |  | 100% |  |  |  |  |  | 96h | 96h |
| 3 | 1.1.1 | Preparação de Candidatura |  | 1d | 2021-04-01 A | 2021-04-01 A |  | 100% |  |  |  |  | João Silva; Luís Silvério; Bernardo Calado; Mariana Dias | 32h | 32h |
| 4 | 1.1.2 | Entrega de documentação | milestone | 3d | 2021-04-02 A | 2021-04-06 A | 3 | 100% |  |  |  | finish no later than 2021-04-09 | João Silva; Luís Silvério; Bernardo Calado; Mariana Dias | 24h | 24h |
| 5 | 1.1.3 | Aprovação de Projeto |  | 5d | 2021-04-05 A | 2021-04-09 A | 4 | 100% |  |  |  | finish no later than 2021-04-16 | Mário Marques da Silva | 40h | 40h |
| 6 | 1.2 | **Project** |  | 4.62d | 2021-04-12 A | 2021-04-16 A |  | 100% |  |  |  |  |  | 148h | 148h |
| 7 | 1.2.1 | Levantamento de requisitos |  | 2d | 2021-04-12 A | 2021-04-13 A | 5 | 100% |  |  |  |  | Luís Silvério; João Silva; Bernardo Calado; Mariana Dias | 64h | 64h |
| 8 | 1.2.2 | Analise de Tarefas |  | 1d | 2021-04-14 A | 2021-04-14 A | 7 | 100% |  |  |  |  | Luís Silvério; João Silva; Bernardo Calado; Mariana Dias | 32h | 32h |
| 9 | 1.2.3 | Planeamento |  | 1d | 2021-04-15 A | 2021-04-15 A | 8 | 100% |  |  |  |  | Luís Silvério; João Silva; Bernardo Calado; Mariana Dias | 32h | 32h |
| 10 | 1.2.4 | Elaboração de project |  | 4h | 2021-04-16 A | 2021-04-16 A | 9 | 100% |  |  |  |  | Luís Silvério; João Silva; Bernardo Calado; Mariana Dias | 16h | 16h |
| 11 | 1.2.5 | Entrega de project | milestone | 1h | 2021-04-16 A | 2021-04-16 A | 10 | 100% |  |  |  | finish no later than 2021-04-19 | Luís Silvério; João Silva; Bernardo Calado; Mariana Dias | 4h | 4h |
| 12 | 1.3 | **Desenvolvimento** |  | 56.25d | 2021-04-16 A | 2021-07-05 |  | 71% | 16.07d | 6.75d |  |  |  | 1104h | 684h |
| 13 | 1.3.1 | **Prototipagem** |  | 10.25d | 2021-04-16 A | 2021-04-30 A |  | 100% |  |  |  |  |  | 88h | 88h |
| 14 | 1.3.1.1 | Aplicação |  | 5d | 2021-04-16 A | 2021-04-23 A | 11 | 100% |  |  |  |  | Luís Silvério | 40h | 40h |
| 15 | 1.3.1.2 | Website |  | 5d | 2021-04-23 A | 2021-04-30 A | 11 | 100% |  |  |  |  | Luís Silvério | 40h | 40h |
| 16 | 1.3.1.3 | Selecção e plataformas e software |  | 2h | 2021-04-30 A | 2021-04-30 A | 14, 15 | 100% |  |  |  | finish no later than 2021-04-30 | Luís Silvério; João Silva; Bernardo Calado; Mariana Dias | 8h | 8h |
| 17 | 1.3.2 | **Base de dados** |  | 8d | 2021-05-04 A | 2021-05-14 A |  | 100% |  |  |  |  |  | 184h | 184h |
| 18 | 1.3.2.1 | Recolha de requisitos |  | 1d | 2021-05-04 A | 2021-05-05 A | 13 | 100% |  |  |  |  | Luís Silvério; João Silva; Bernardo Calado; Mariana Dias | 32h | 32h |
| 19 | 1.3.2.2 | Elaboração de diagramas |  | 3d | 2021-05-05 A | 2021-05-10 A | 18 | 100% |  |  |  |  | Luís Silvério; João Silva; Bernardo Calado; Mariana Dias | 96h | 96h |
| 20 | 1.3.2.3 | Planeamento de implementação |  | 1d | 2021-05-10 A | 2021-05-11 A | 19 | 100% |  |  |  |  | Luís Silvério; João Silva; Bernardo Calado; Mariana Dias | 32h | 32h |
| 21 | 1.3.2.4 | Construção |  | 3d | 2021-05-11 A | 2021-05-14 A | 20 | 100% |  |  |  |  | Bernardo Calado | 24h | 24h |
| 22 | 1.3.3 | **Aplicação** |  | 37d | 2021-04-30 A | 2021-06-22 |  | 85% | 5.37d | 6.75d | 0d |  |  | 272h | 236h |
| 23 | 1.3.3.1 | Analise de prototipo |  | 1d | 2021-04-30 A | 2021-05-03 A | 13 | 100% |  |  |  |  | João Silva; Luís Silvério; Bernardo Calado; Mariana Dias | 32h | 32h |
| 24 | 1.3.3.2 | Construção |  | 30d | 2021-05-11 A | 2021-06-22 | 23 | 85% | 4.5d | 6.75d |  |  | João Silva | 240h | 204h |

| ID | WBS | Task | Duration | Start | Finish | Predecessors | Complete | Remaining | Total slack | Free slack | Constraint | Resources | Work | Actual work |
| --- | --- | --- | --- | --- | --- | --- | --- | --- | --- | --- | --- | --- | --- | --- |
| 25 | 1.3.4 | **Website** | 36d | 2021-05-03 A | 2021-06-22 |  | 61% | 13.94d | 6.75d | 0d |  |  | 272h | 176h |
| 26 | 1.3.4.1 | Analise de prototipo | 1d | 2021-05-03 A | 2021-05-04 A | 13 | 100% |  |  |  |  | Luís Silvério; João Silva; Bernardo Calado; Mariana Dias | 32h | 32h |
| 27 | 1.3.4.2 | Construção | 30d | 2021-05-11 A | 2021-06-22 | 26 | 60% | 12d | 6.75d |  |  | Luís Silvério | 240h | 144h |
| 28 | 1.3.5 | **Testes** | 9d | 2021-06-22 | 2021-07-05 |  |  |  | 6.75d |  |  |  | 288h |  |
| 29 | 1.3.5.1 | 1ª fase | 2d | 2021-06-22 | 2021-06-24 | 17, 22, 25 |  |  | 6.75d | 0d |  | Luís Silvério; João Silva; Bernardo Calado; Mariana Dias | 64h |  |
| 30 | 1.3.5.2 | Patching | 5d | 2021-06-24 | 2021-07-01 | 29 |  |  | 6.75d | 0d |  | Luís Silvério; João Silva; Bernardo Calado; Mariana Dias | 160h |  |
| 31 | 1.3.5.3 | 2ª fase | 2d | 2021-07-01 | 2021-07-05 | 30 |  |  | 6.75d |  |  | Luís Silvério; João Silva; Bernardo Calado; Mariana Dias | 64h |  |
| 32 | 1.4 | **Relatório** | 6.75d | 2021-07-05 A | 2021-07-14 |  | 30% | 4.75d | 0d |  |  |  | 90h | 28h |
| 33 | 1.4.1 | Analise de modelo | 2h | 2021-07-05 A | 2021-07-06 A | 13, 17, 22, 25, 28 | 100% |  |  |  |  | Luís Silvério; João Silva; Bernardo Calado; Mariana Dias | 8h | 8h |
| 34 | 1.4.2 | Planeamento | 2h | 2021-07-06 A | 2021-07-06 A | 33 | 100% |  |  |  |  | Luís Silvério; João Silva; Bernardo Calado; Mariana Dias | 8h | 8h |
| 35 | 1.4.3 | Elaboração | 5d | 2021-07-06 A | 2021-07-13 | 34 | 30% | 3.5d | 0d |  |  | Mariana Dias | 40h | 12h |
| 36 | 1.4.4 | 1ª leitura | 4h | 2021-07-13 | 2021-07-13 | 35 |  |  | 0d |  |  | Luís Silvério; João Silva; Bernardo Calado; Mariana Dias | 16h |  |
| 37 | 1.4.5 | Correções | 2h | 2021-07-13 | 2021-07-14 | 36 |  |  | 0d |  |  | Mariana Dias | 2h |  |
| 38 | 1.4.6 | 2ª leitura | 4h | 2021-07-14 | 2021-07-14 | 37 |  |  | 0d |  |  | Luís Silvério; João Silva; Bernardo Calado; Mariana Dias | 16h |  |
| 39 | 1.5 | Entrega | 1d | 2021-07-14 | 2021-07-15 | 2, 6, 12, 17, 22, 25, 28, 32 |  |  | 0d |  | finish no later than 2021-07-15 |  |  |  |
